# Neuer Aussenstandort

Schedule from MS Project, 2025-05-26 to 2025-11-03, costs in CHF.
IT-AG

## Calendars

- Standard: Mon-Fri 08:00-12:00, 13:00-17:00; Sat-Sun off.

## Resources

| Resource | Group | Rate |
| --- | --- | --- |
| Eden Bruderer | IT-AG | 120 |
| David Strainovic | IT-AG | 100 |

## Schedule

| ID | WBS | Task | Type | Duration | Start | Finish | Predecessors | Total slack | Resources | Work | Cost | Aufwand | Lieferobjekt |
| --- | --- | --- | --- | --- | --- | --- | --- | --- | --- | --- | --- | --- | --- |
| 1 | 1 | **Analyse** |  | 5d | 2025-05-26 | 2025-05-30 |  | 0d |  | 20h | 2,240 |  |  |
| 2 | 1.1 | Projektauftrag prüfen |  | 2d | 2025-05-26 | 2025-05-27 |  | 0d | Eden Bruderer [50%] | 8h | 960 | 6h |  |
| 3 | 1.2 | Rahmenbedingungen klären |  | 2d | 2025-05-28 | 2025-05-29 | 2 | 0d | David Strainovic [50%] | 8h | 800 | 4h | Konzept |
| 4 | 1.3 | Risikoanalyse |  | 1d | 2025-05-30 | 2025-05-30 | 3 | 0d | Eden Bruderer [50%] | 4h | 480 | 10h | Risikobericht |
| 5 | 1.4 | MS: Projekt bewilligt | milestone | 0d | 2025-05-26 | 2025-05-26 |  | 6d |  |  |  |  |  |
| 6 | 2 | **Konzept-Evaluation** |  | 4d | 2025-05-30 | 2025-06-05 | 1 | 0d |  | 24h | 2,720 |  |  |
| 7 | 2.1 | Pflichtenheft erstellen |  | 2d | 2025-06-02 | 2025-06-03 |  | 2d | David Strainovic [50%] | 8h | 800 | 4h | Pflichtenheft |
| 8 | 2.2 | Expertengespräche durchführen |  | 4d | 2025-06-02 | 2025-06-05 |  | 0d | Eden Bruderer [50%] | 16h | 1,920 | 12h |  |
| 9 | 2.3 | MS: Projekt erfolgreich zu Ende gebracht | milestone | 0d | 2025-05-30 | 2025-05-30 |  | 4d |  |  |  |  |  |
| 10 | 3 | **Umsetzungsplanung** |  | 41.5d | 2025-06-05 | 2025-08-04 | 6 | 0d |  | 48h | 5,340 |  |  |
| 11 | 3.1 | Projektstrukturplan erstellen |  | 5d | 2025-06-06 | 2025-06-12 |  | 0d | Eden Bruderer [50%] | 8h | 960 | 6h | PSP |
| 12 | 3.2 | Liegenschaftsliste erstellen |  | 1.5d | 2025-06-13 | 2025-06-16 | 11 | 0d | David Strainovic [50%] | 6h | 600 | 4h | Gebäude rausgesucht |
| 13 | 3.3 | Liegenschaften besichtigen |  | 30d | 2025-06-16 | 2025-07-28 | 12 | 0d | Eden Bruderer [50%]; David Strainovic [50%] | 30h | 3,300 | 25h |  |
| 14 | 3.4 | Offerten für Einrichtung einholen |  | 5d | 2025-07-28 | 2025-08-04 | 13 | 0d | Eden Bruderer [50%] | 4h | 480 | 6h | Offerten |
| 15 | 3.5 | MS: Für ein Gebäude entschieden | milestone | 0d | 2025-06-05 | 2025-06-05 |  | 41.5d |  |  |  |  |  |
| 16 | 4 | **Realisierung** |  | 62d | 2025-08-04 | 2025-10-29 | 10 | 0d |  | 114h | 12,469.09 |  |  |
| 17 | 4.1 | Mietvertrag prüfen & unterzeichnen |  | 2d | 2025-08-04 | 2025-08-06 |  | 0d | Eden Bruderer [50%] | 8h | 960 | 16h | Vertrag |
| 18 | 4.2 | Einrichtung bestellen |  | 30d | 2025-08-04 | 2025-09-15 |  | 32d | David Strainovic [50%] | 4h | 400 | 8h | Büroeinrichtung |
| 19 | 4.3 | Gebäude übernehmen |  | 10d | 2025-08-06 | 2025-08-20 | 17 | 0d | David Strainovic [50%] | 2h | 200 | 2h | Schlüssel |
| 20 | 4.4 | IT-Infrastruktur einrichten |  | 50d | 2025-08-20 | 2025-10-29 | 19 | 0d | Eden Bruderer [50%]; David Strainovic [50%] | 100h | 10,909.09 | 35h | Funktionierende Infrastruktur |
| 21 | 4.5 | MS: Standort bereit zur Einführung | milestone | 0d | 2025-08-04 | 2025-08-04 |  | 62d |  |  |  |  |  |
| 22 | 5 | **Einführung** |  | 3d | 2025-10-29 | 2025-11-03 | 16 | 0d |  | 16h | 1,760 |  |  |
| 23 | 5.1 | Neuer Standort den Mitarbeitern übergeben |  | 1d | 2025-10-29 | 2025-10-30 |  | 2d | Eden Bruderer [50%] | 4h | 480 | 4h |  |
| 24 | 5.2 | Einweihungsfest |  | 2d | 2025-10-29 | 2025-10-31 |  | 0d | David Strainovic [50%] | 4h | 400 | 8h | Glückliche Mitarbeiter |
| 25 | 5.3 | Abschlussmeeting |  | 1d | 2025-10-31 | 2025-11-03 | 24 | 0d | Eden Bruderer [50%]; David Strainovic [50%] | 8h | 880 | 4h |  |
| 26 | 5.4 | MS: Projektergebnis erfolgreich getestet und eingeführt | milestone | 0d | 2025-10-29 | 2025-10-29 |  | 3d |  |  |  |  |  |
